# Business Plan Typed

Schedule from MS Project, 2025-05-19 to 2025-06-13, costs in R, A marks actual dates.

## Calendars

- Standard: Mon-Fri 08:00-12:00, 13:00-17:00; Sat-Sun off.

## Resources

| Resource | Rate |
| --- | --- |
| Manager | 50 |
| Business Advisor | 100 |
| Owners |  |
| Peers |  |
| Accountant |  |
| Lawyer | 300 |
| Banker |  |
| Government Agency |  |
| Information Services |  |
| Business Permit |  |

## Schedule

| ID | WBS | Task | Type | Duration | Start | Finish | Predecessors | Complete | Remaining | Baseline start | Baseline finish | Baseline duration | Total slack | Free slack | Resources | Work | Cost | Baseline cost |
| --- | --- | --- | --- | --- | --- | --- | --- | --- | --- | --- | --- | --- | --- | --- | --- | --- | --- | --- |
| 1 | 1 | **Business Plan** |  | 20d? | 2025-05-19 A | 2025-06-13 |  |  | 19.93d? | 2025-05-19 | 2025-06-13 | 20d? | 0d |  |  | 1368h | 110,400 | 110,400 |
| 2 | 1.1 | **Phase 1 - Strategic Plan** |  | 12d | 2025-05-19 A | 2025-06-03 |  | 2% | 11.79d | 2025-05-19 | 2025-06-03 | 12d | 8d |  |  | 240h | 13,200 | 13,200 |
| 3 | 1.1.1 | Self - Assessment |  | 3d | 2025-05-19 A | 2025-05-21 |  | 20% | 2.4d | 2025-05-19 | 2025-05-21 | 3d | 0d |  |  |  |  |  |
| 4 | 1.1.2 | Define business vision |  | 1d | 2025-05-19 | 2025-05-19 |  |  |  | 2025-05-19 | 2025-05-19 | 1d | 10d | 0d | Manager | 8h | 400 | 400 |
| 5 | 1.1.3 | Identify available skills, information and support |  | 1d | 2025-05-22 | 2025-05-22 | 3 |  |  | 2025-05-22 | 2025-05-22 | 1d | 0d |  | Business Advisor; Manager | 16h | 1,200 | 1,200 |
| 6 | 1.1.4 | Decide whether to proceed |  | 1d | 2025-05-20 | 2025-05-20 | 4 |  |  | 2025-05-20 | 2025-05-20 | 1d | 10d | 0d | Manager | 8h | 400 | 400 |
| 7 | 1.1.5 | Define the Opportunity |  | 1d | 2025-05-19 | 2025-05-19 |  |  |  | 2025-05-19 | 2025-05-19 | 1d | 17d | 0d |  |  |  |  |
| 8 | 1.1.6 | Research the market and competition |  | 1d | 2025-05-23 | 2025-05-23 | 5 |  |  | 2025-05-23 | 2025-05-23 | 1d | 0d |  | Business Advisor | 8h | 800 | 800 |
| 9 | 1.1.7 | Interview owners of similar businesses |  | 5d | 2025-05-21 | 2025-05-27 | 6 |  |  | 2025-05-21 | 2025-05-27 | 5d | 10d | 0d | Owners | 40h |  |  |
| 10 | 1.1.8 | Identify needed resources |  | 2d | 2025-05-20 | 2025-05-21 | 7 |  |  | 2025-05-20 | 2025-05-21 | 2d | 17d |  | Business Advisor; Peers | 32h | 1,600 | 1,600 |
| 11 | 1.1.9 | Identify operating cost elements |  | 2d | 2025-05-26 | 2025-05-27 | 8 |  |  | 2025-05-26 | 2025-05-27 | 2d | 0d |  | Accountant | 16h |  |  |
| 12 | 1.1.10 | Evaluate Business Approach |  | 1d | 2025-05-19 | 2025-05-19 |  |  |  | 2025-05-19 | 2025-05-19 | 1d | 18d | 0d |  |  |  |  |
| 13 | 1.1.11 | 1 |  | 1d | 2025-05-28 | 2025-05-28 | 9 |  |  | 2025-05-28 | 2025-05-28 | 1d | 10d | 0d | Manager | 8h | 400 | 400 |
| 14 | 1.1.12 | Identify on-going business purchase opportunities |  | 1d | 2025-05-28 | 2025-05-28 | 11 |  |  | 2025-05-28 | 2025-05-28 | 1d | 8d | 0d | Manager | 8h | 400 | 400 |
| 15 | 1.1.13 | Research franchise possibilities |  | 1d | 2025-05-20 | 2025-05-20 | 12 |  |  | 2025-05-20 | 2025-05-20 | 1d | 18d |  | Manager | 8h | 400 | 400 |
| 16 | 1.1.14 | Summarize business approach |  | 1d | 2025-05-29 | 2025-05-29 | 13 |  |  | 2025-05-29 | 2025-05-29 | 1d | 10d | 0d | Manager | 8h | 400 | 400 |
| 17 | 1.1.15 | Evaluate Potential Risks and Rewards |  | 1d | 2025-05-19 | 2025-05-19 |  |  |  | 2025-05-19 | 2025-05-19 | 1d | 16d | 0d |  |  |  |  |
| 18 | 1.1.16 | Assess market size and stability |  | 2d | 2025-05-28 | 2025-05-29 | 11 |  |  | 2025-05-28 | 2025-05-29 | 2d | 0d |  | Business Advisor | 16h | 1,600 | 1,600 |
| 19 | 1.1.17 | Estimate the competition |  | 1d | 2025-05-30 | 2025-05-30 | 16 |  |  | 2025-05-30 | 2025-05-30 | 1d | 10d |  | Business Advisor | 8h | 800 | 800 |
| 20 | 1.1.18 | Assess needed resource availability |  | 2d | 2025-05-20 | 2025-05-21 | 17 |  |  | 2025-05-20 | 2025-05-21 | 2d | 16d | 0d | Business Advisor | 16h | 1,600 | 1,600 |
| 21 | 1.1.19 | Evaluate realistic initial market share |  | 1d | 2025-05-30 | 2025-05-30 | 18 |  |  | 2025-05-30 | 2025-05-30 | 1d | 0d |  | Business Advisor | 8h | 800 | 800 |
| 22 | 1.1.20 | Determine financial requirements |  | 2d | 2025-05-29 | 2025-05-30 | 14 |  |  | 2025-05-29 | 2025-05-30 | 2d | 8d | 0d | Business Advisor | 16h | 1,600 | 1,600 |
| 23 | 1.1.21 | Review personal suitability |  | 1d | 2025-05-22 | 2025-05-22 | 20 |  |  | 2025-05-22 | 2025-05-22 | 1d | 16d | 0d | Manager | 8h | 400 | 400 |
| 24 | 1.1.22 | Evaluate initial profitability |  | 1d | 2025-06-02 | 2025-06-02 | 21 |  |  | 2025-06-02 | 2025-06-02 | 1d | 0d |  | Manager | 8h | 400 | 400 |
| 25 | 1.1.23 | Review and modify the strategic plan |  | 2d | 2025-06-02 | 2025-06-03 | 22 |  |  | 2025-06-02 | 2025-06-03 | 2d | 8d |  |  |  |  |  |
| 26 | 1.1.24 | Confirm decision to proceed | milestone | 0d | 2025-05-22 | 2025-05-22 | 23 |  |  | 2025-05-22 | 2025-05-22 | 0d | 16d |  |  |  |  |  |

| ID | WBS | Task | Type | Duration | Start | Finish | Predecessors | Baseline start | Baseline finish | Baseline duration | Total slack | Free slack | Resources | Work | Cost | Baseline cost |
| --- | --- | --- | --- | --- | --- | --- | --- | --- | --- | --- | --- | --- | --- | --- | --- | --- |
| 27 | 1.2 | **Phase 2 - Define the Business Opportunity** |  | 20d | 2025-05-19 | 2025-06-13 |  | 2025-05-19 | 2025-06-13 | 20d | 0d |  |  | 208h | 14,800 | 14,800 |
| 28 | 1.2.1 | Define the Market |  | 1d | 2025-05-19 | 2025-05-19 |  | 2025-05-19 | 2025-05-19 | 1d | 11d | 0d |  |  |  |  |
| 29 | 1.2.2 | Access available information |  | 1d | 2025-06-03 | 2025-06-03 | 24 | 2025-06-03 | 2025-06-03 | 1d | 0d |  | Business Advisor | 8h | 800 | 800 |
| 30 | 1.2.3 | Create market analysis plan |  | 2d | 2025-05-19 | 2025-05-20 |  | 2025-05-19 | 2025-05-20 | 2d | 16d | 0d | Business Advisor | 16h | 1,600 | 1,600 |
| 31 | 1.2.4 | Implement market analysis plan |  | 5d | 2025-05-20 | 2025-05-26 | 28 | 2025-05-20 | 2025-05-26 | 5d | 11d | 0d | Business Advisor | 40h | 4,000 | 4,000 |
| 32 | 1.2.5 | Identify competition |  | 2d | 2025-06-04 | 2025-06-05 | 29 | 2025-06-04 | 2025-06-05 | 2d | 0d |  | Business Advisor | 16h | 1,600 | 1,600 |
| 33 | 1.2.6 | Summarize the market |  | 2d | 2025-05-21 | 2025-05-22 | 30 | 2025-05-21 | 2025-05-22 | 2d | 16d |  | Business Advisor | 16h | 1,600 | 1,600 |
| 34 | 1.2.7 | Identify target market niche |  | 1d | 2025-05-27 | 2025-05-27 | 31 | 2025-05-27 | 2025-05-27 | 1d | 11d | 0d | Business Advisor | 8h | 800 | 800 |
| 35 | 1.2.8 | Identify Needed Materials and Supplies |  | 1d | 2025-05-19 | 2025-05-19 |  | 2025-05-19 | 2025-05-19 | 1d | 15d | 0d |  |  |  |  |
| 36 | 1.2.9 | Select a business approach (from "Evaluate Business Approach" above) |  | 2d | 2025-06-06 | 2025-06-09 | 32 | 2025-06-06 | 2025-06-09 | 2d | 0d |  | Manager | 16h | 800 | 800 |
| 37 | 1.2.10 | Identify management staff resources |  | 1d | 2025-05-28 | 2025-05-28 | 34 | 2025-05-28 | 2025-05-28 | 1d | 11d | 0d | Manager | 8h | 400 | 400 |
| 38 | 1.2.11 | Identify staffing requirements |  | 1d | 2025-05-20 | 2025-05-20 | 35 | 2025-05-20 | 2025-05-20 | 1d | 15d | 0d | Manager | 8h | 400 | 400 |
| 39 | 1.2.12 | Identify needed raw materials |  | 1d | 2025-06-10 | 2025-06-10 | 36 | 2025-06-10 | 2025-06-10 | 1d | 0d |  | Manager | 8h | 400 | 400 |
| 40 | 1.2.13 | Identify needed utilities |  | 1d | 2025-05-29 | 2025-05-29 | 37 | 2025-05-29 | 2025-05-29 | 1d | 11d |  | Manager | 8h | 400 | 400 |
| 41 | 1.2.14 | Summarize operating expenses and financial projections |  | 1d | 2025-05-21 | 2025-05-21 | 38 | 2025-05-21 | 2025-05-21 | 1d | 15d | 0d | Manager | 8h | 400 | 400 |
| 42 | 1.2.15 | Evaluate Potential Risks and Rewards |  | 1d | 2025-05-19 | 2025-05-19 |  | 2025-05-19 | 2025-05-19 | 1d | 9d | 0d |  |  |  |  |
| 43 | 1.2.16 | Assess market size and stability |  | 2d | 2025-06-11 | 2025-06-12 | 39 | 2025-06-11 | 2025-06-12 | 2d | 0d |  | Manager | 16h | 800 | 800 |
| 44 | 1.2.17 | Assess needed resources availability |  | 2d | 2025-05-22 | 2025-05-23 | 41 | 2025-05-22 | 2025-05-23 | 2d | 15d | 0d | Manager | 16h | 800 | 800 |
| 45 | 1.2.18 | Forecast financial returns |  | 2d | 2025-05-20 | 2025-05-21 | 42 | 2025-05-20 | 2025-05-21 | 2d | 9d | 0d | Accountant | 16h |  |  |
| 46 | 1.2.19 | Review and modify the business opportunity |  | 1d | 2025-06-13 | 2025-06-13 | 43 | 2025-06-13 | 2025-06-13 | 1d | 0d |  |  |  |  |  |
| 47 | 1.2.20 | Confirm decision to proceed | milestone | 0d | 2025-05-23 | 2025-05-23 | 44 | 2025-05-23 | 2025-05-23 | 0d | 15d |  | Business Advisor; Peers; Lawyer; Accountant |  |  |  |
| 48 | 1.3 | **Phase 3 - Plan for Action** |  | 10d | 2025-05-19 | 2025-05-30 |  | 2025-05-19 | 2025-05-30 | 10d | 10d |  |  | 184h | 16,800 | 16,800 |
| 49 | 1.3.1 | Develop Detailed 5-Year Business Plan |  | 1d | 2025-05-19 | 2025-05-19 |  | 2025-05-19 | 2025-05-19 | 1d | 13d | 0d |  |  |  |  |
| 50 | 1.3.2 | Describe the vision and opportunity |  | 1d | 2025-05-22 | 2025-05-22 | 45 | 2025-05-22 | 2025-05-22 | 1d | 9d | 0d | Business Advisor | 8h | 800 | 800 |
| 51 | 1.3.3 | List assumptions |  | 1d | 2025-05-19 | 2025-05-19 |  | 2025-05-19 | 2025-05-19 | 1d | 11d | 0d | Business Advisor | 8h | 800 | 800 |
| 52 | 1.3.4 | Describe the market |  | 1d | 2025-05-20 | 2025-05-20 | 49 | 2025-05-20 | 2025-05-20 | 1d | 13d | 0d | Business Advisor | 8h | 800 | 800 |
| 53 | 1.3.5 | Describe the new business |  | 1d | 2025-05-23 | 2025-05-23 | 50 | 2025-05-23 | 2025-05-23 | 1d | 9d | 0d | Business Advisor | 8h | 800 | 800 |
| 54 | 1.3.6 | Describe strengths, weaknesses, assets and threats |  | 1d | 2025-05-20 | 2025-05-20 | 51 | 2025-05-20 | 2025-05-20 | 1d | 11d | 0d | Business Advisor | 8h | 800 | 800 |
| 55 | 1.3.7 | Estimate sales volume during startup period |  | 1d | 2025-05-21 | 2025-05-21 | 52 | 2025-05-21 | 2025-05-21 | 1d | 13d | 0d | Business Advisor; Accountant | 16h | 800 | 800 |
| 56 | 1.3.8 | Forecast operating costs |  | 1d | 2025-05-26 | 2025-05-26 | 53 | 2025-05-26 | 2025-05-26 | 1d | 9d | 0d | Business Advisor; Accountant | 16h | 800 | 800 |
| 57 | 1.3.9 | Establish pricing strategy |  | 1d | 2025-05-21 | 2025-05-21 | 54 | 2025-05-21 | 2025-05-21 | 1d | 11d | 0d | Business Advisor | 8h | 800 | 800 |
| 58 | 1.3.10 | Forecast revenue |  | 1d | 2025-05-22 | 2025-05-22 | 55 | 2025-05-22 | 2025-05-22 | 1d | 13d | 0d | Business Advisor | 8h | 800 | 800 |
| 59 | 1.3.11 | Summarize pro-forma financial statement |  | 2d | 2025-05-27 | 2025-05-28 | 56 | 2025-05-27 | 2025-05-28 | 2d | 9d | 0d | Business Advisor | 16h | 1,600 | 1,600 |
| 60 | 1.3.12 | Develop break-even analysis |  | 1d | 2025-05-22 | 2025-05-22 | 57 | 2025-05-22 | 2025-05-22 | 1d | 11d | 0d | Business Advisor | 8h | 800 | 800 |
| 61 | 1.3.13 | Develop cash-flow projection |  | 1d | 2025-05-23 | 2025-05-23 | 58 | 2025-05-23 | 2025-05-23 | 1d | 13d | 0d | Business Advisor | 8h | 800 | 800 |
| 62 | 1.3.14 | Identify licensing and permitting requirements |  | 1d | 2025-05-29 | 2025-05-29 | 59 | 2025-05-29 | 2025-05-29 | 1d | 9d | 0d | Business Advisor | 8h | 800 | 800 |
| 63 | 1.3.15 | Develop startup plan |  | 2d | 2025-05-23 | 2025-05-26 | 60 | 2025-05-23 | 2025-05-26 | 2d | 11d | 0d | Business Advisor | 16h | 1,600 | 1,600 |
| 64 | 1.3.16 | Develop sales and marketing strategy |  | 1d | 2025-05-26 | 2025-05-26 | 61 | 2025-05-26 | 2025-05-26 | 1d | 13d | 0d | Business Advisor | 8h | 800 | 800 |
| 65 | 1.3.17 | Develop distribution structure |  | 1d | 2025-05-30 | 2025-05-30 | 62 | 2025-05-30 | 2025-05-30 | 1d | 9d | 0d | Business Advisor | 8h | 800 | 800 |
| 66 | 1.3.18 | Describe risks and opportunities |  | 2d | 2025-05-27 | 2025-05-28 | 63 | 2025-05-27 | 2025-05-28 | 2d | 11d | 0d | Business Advisor | 16h | 1,600 | 1,600 |
| 67 | 1.3.19 | Publish the business plan |  | 1d | 2025-05-27 | 2025-05-27 | 64 | 2025-05-27 | 2025-05-27 | 1d | 13d |  | Business Advisor | 8h | 800 | 800 |
| 68 | 1.3.20 | Confirm decision to proceed | milestone | 0d | 2025-05-30 | 2025-05-30 | 65 | 2025-05-30 | 2025-05-30 | 0d | 9d | 0d | Business Advisor |  |  |  |

| ID | WBS | Task | Type | Duration | Start | Finish | Predecessors | Baseline start | Baseline finish | Baseline duration | Total slack | Free slack | Resources | Work | Cost | Baseline cost |
| --- | --- | --- | --- | --- | --- | --- | --- | --- | --- | --- | --- | --- | --- | --- | --- | --- |
| 69 | 1.4 | **Phase 4 - Proceed With Startup Plan** |  | 17d? | 2025-05-19 | 2025-06-10 |  | 2025-05-19 | 2025-06-10 | 17d? | 3d |  |  | 736h | 65,600 | 65,600 |
| 70 | 1.4.1 | Choose a location |  | 1d | 2025-05-29 | 2025-05-29 | 66 | 2025-05-29 | 2025-05-29 | 1d | 11d |  |  |  |  |  |
| 71 | 1.4.2 | Establish Business Structure |  | 1d | 2025-05-19 | 2025-05-19 |  | 2025-05-19 | 2025-05-19 | 1d | 4d | 0d |  |  |  |  |
| 72 | 1.4.3 | Choose a Name |  | 1d | 2025-05-19 | 2025-05-19 |  | 2025-05-19 | 2025-05-19 | 1d | 8d | 0d |  |  |  |  |
| 73 | 1.4.4 | Identify implications |  | 1d | 2025-06-02 | 2025-06-02 | 68 | 2025-06-02 | 2025-06-02 | 1d | 9d |  | Lawyer | 8h | 2,400 | 2,400 |
| 74 | 1.4.5 | Research name availability |  | 1d | 2025-05-20 | 2025-05-20 | 71 | 2025-05-20 | 2025-05-20 | 1d | 4d | 0d | Lawyer | 8h | 2,400 | 2,400 |
| 75 | 1.4.6 | Choose a Bank |  | 1d | 2025-05-19 | 2025-05-19 |  | 2025-05-19 | 2025-05-19 | 1d | 4d | 0d |  |  |  |  |
| 76 | 1.4.7 | Establish accounts |  | 4d | 2025-05-20 | 2025-05-23 | 72 | 2025-05-20 | 2025-05-23 | 4d | 8d | 0d | Banker | 32h |  |  |
| 77 | 1.4.8 | Establish line of credit |  | 1d | 2025-05-21 | 2025-05-21 | 74 | 2025-05-21 | 2025-05-21 | 1d | 15d | 0d | Banker | 8h |  |  |
| 78 | 1.4.9 | Choose legal representation |  | 1d | 2025-05-20 | 2025-05-20 | 75, 74SS | 2025-05-20 | 2025-05-20 | 1d | 4d | 0d | Lawyer | 8h | 2,400 | 2,400 |
| 79 | 1.4.10 | Select business tax-basis category |  | 2d | 2025-05-26 | 2025-05-27 | 76 | 2025-05-26 | 2025-05-27 | 2d | 8d | 0d | Lawyer; Accountant | 32h | 4,800 | 4,800 |
| 80 | 1.4.11 | Choose capital funding source |  | 2d | 2025-05-22 | 2025-05-23 | 77 | 2025-05-22 | 2025-05-23 | 2d | 15d |  | Manager | 16h | 800 | 800 |
| 81 | 1.4.12 | Commit capital funding | milestone | 0d | 2025-05-20 | 2025-05-20 | 78 | 2025-05-20 | 2025-05-20 | 0d | 6d | 0d | Manager |  |  |  |
| 82 | 1.4.13 | Establish the Operating Control Base |  | 1d | 2025-05-19 | 2025-05-19 |  | 2025-05-19 | 2025-05-19 | 1d | 15d | 0d |  |  |  |  |
| 83 | 1.4.14 | Choose and set up the accounting system |  | 2d | 2025-05-28 | 2025-05-29 | 79, 78 | 2025-05-28 | 2025-05-29 | 2d | 8d | 0d | Accountant | 16h |  |  |
| 84 | 1.4.15 | Obtain required licenses and permits |  | 4d | 2025-05-21 | 2025-05-26 | 81 | 2025-05-21 | 2025-05-26 | 4d | 6d | 0d | Lawyer; Government Agency | 64h | 9,600 | 9,600 |
| 85 | 1.4.16 | Obtain needed insurance |  | 4d | 2025-05-20 | 2025-05-23 | 82 | 2025-05-20 | 2025-05-23 | 4d | 15d |  | Accountant | 32h |  |  |
| 86 | 1.4.17 | Establish security plan |  | 2d | 2025-05-30 | 2025-06-02 | 83 | 2025-05-30 | 2025-06-02 | 2d | 8d | 0d | Business Advisor; Lawyer | 32h | 6,400 | 6,400 |
| 87 | 1.4.18 | Develop Marketing Program |  | 1d? | 2025-05-19 | 2025-05-19 |  | 2025-05-19 | 2025-05-19 | 1d? | 13d | 0d |  |  |  |  |
| 88 | 1.4.19 | Establish an advertising program |  | 2d | 2025-05-19 | 2025-05-20 | 72SS | 2025-05-19 | 2025-05-20 | 2d | 10d | 4d | Business Advisor | 16h | 1,600 | 1,600 |
| 89 | 1.4.20 | Develop a logo |  | 1d | 2025-06-03 | 2025-06-03 | 86 | 2025-06-03 | 2025-06-03 | 1d | 8d |  | Business Advisor; Lawyer | 16h | 3,200 | 3,200 |
| 90 | 1.4.21 | Order promotional materials |  | 1d | 2025-05-20 | 2025-05-20 | 87 | 2025-05-20 | 2025-05-20 | 1d | 13d | 0d | Business Advisor | 8h | 800 | 800 |
| 91 | 1.4.22 | Provide Physical Facilities |  | 1d | 2025-05-19 | 2025-05-19 |  | 2025-05-19 | 2025-05-19 | 1d | 7d | 0d |  |  |  |  |
| 92 | 1.4.23 | Secure operation space |  | 5d | 2025-05-27 | 2025-06-02 | 84, 88 | 2025-05-27 | 2025-06-02 | 5d | 6d | 0d | Lawyer | 40h | 12,000 | 12,000 |
| 93 | 1.4.24 | Select computer network hardware |  | 1d | 2025-05-21 | 2025-05-21 | 90 | 2025-05-21 | 2025-05-21 | 1d | 13d | 0d | Information Services | 8h |  |  |
| 94 | 1.4.25 | Select computer software |  | 1d | 2025-05-20 | 2025-05-20 | 91 | 2025-05-20 | 2025-05-20 | 1d | 7d | 0d | Information Services | 8h |  |  |
| 95 | 1.4.26 | Establish utilities |  | 3d | 2025-06-03 | 2025-06-05 | 92 | 2025-06-03 | 2025-06-05 | 3d | 6d | 2d | Manager | 24h | 1,200 | 1,200 |
| 96 | 1.4.27 | Provide furniture and equipment |  | 4d | 2025-05-22 | 2025-05-27 | 93 | 2025-05-22 | 2025-05-27 | 4d | 13d |  | Manager | 32h | 1,600 | 1,600 |
| 97 | 1.4.28 | Move in |  | 1d | 2025-05-21 | 2025-05-21 | 94 | 2025-05-21 | 2025-05-21 | 1d | 7d | 0d | Manager | 8h | 400 | 400 |
| 98 | 1.4.29 | Provide Staffing |  | 1d | 2025-05-19 | 2025-05-19 |  | 2025-05-19 | 2025-05-19 | 1d | 3d | 0d |  |  |  |  |
| 99 | 1.4.30 | Interview and test candidates |  | 14d | 2025-05-21 | 2025-06-09 | 78 | 2025-05-21 | 2025-06-09 | 14d | 4d | 0d | Manager | 112h | 5,600 | 5,600 |
| 100 | 1.4.31 | Hire staff |  | 10d | 2025-05-22 | 2025-06-04 | 97 | 2025-05-22 | 2025-06-04 | 10d | 7d |  | Manager | 80h | 4,000 | 4,000 |
| 101 | 1.4.32 | Train staff |  | 16d | 2025-05-20 | 2025-06-10 | 98 | 2025-05-20 | 2025-06-10 | 16d | 3d |  | Manager | 128h | 6,400 | 6,400 |
| 102 | 1.4.33 | Start up the business | milestone | 0d | 2025-06-09 | 2025-06-09 | 95, 99 | 2025-06-09 | 2025-06-09 | 0d | 4d |  | Manager |  |  |  |
