# Office Building Addition

Schedule from Primavera P6, 2025-05-05 to 2027-02-10, data date 2025-05-24, costs in USD, A marks actual dates.

## Calendars

- 5 Day Work Week: Mon-Fri 08:00-16:00; Sat-Sun off. Exceptions (off unless hours are given): 2025-06-16, 2025-09-24, 2025-12-16, 2025-12-25 to 2025-12-26, 2026-01-01, 2026-04-03, 2026-04-06, 2026-04-27, 2026-05-01, 2026-06-16, 2026-08-10, 2026-09-24, 2026-12-16, 2026-12-25, 2027-01-01.

## Resources

| Resource | Group | Rate |
| --- | --- | --- |
| Designer | labor | 60 |
| Excavater | labor | 70 |
| Ironworker | labor | 55 |
| Laborer-Construction | labor | 40 |
| Rough Carpenter | labor | 50 |
| Finish Carpenter | labor | 60 |
| Painter | labor | 50 |
| Project Controls | labor | 70 |
| Floor and Carpet Layer | labor | 45 |

## Schedule

| ID | WBS | Activity | Duration | Start | Finish | Predecessors | Complete | Remaining | Planned start | Planned finish | Total float | Free float | Constraint | Resources | Cost | Actual cost | Stage | Campaign | Trade |
| --- | --- | --- | --- | --- | --- | --- | --- | --- | --- | --- | --- | --- | --- | --- | --- | --- | --- | --- | --- |
|  | 1 | **Milestone** |  | 2025-05-05 | 2027-02-10 |  |  |  |  |  |  |  |  |  |  |  |  |  |  |
| A1000 |  | Contract Award | 0d | 2025-05-05 A | 2025-05-05 A |  | 100% |  |  |  |  |  | start on or after 2025-05-03 |  |  |  | STG1 | MS | PROJ |
| A1010 |  | Building Addition Complete | 0d | 2027-02-10 | 2027-02-10 | A1130 |  |  |  |  | 0d |  |  |  |  |  | STG6 | MS | PROJ |
|  | 2 | **Design and Engineering** |  | 2025-05-05 | 2025-07-10 |  |  |  |  |  |  |  |  |  |  |  |  |  |  |
| A1020 |  | Design Phase | 41d | 2025-05-05 A | 2025-07-10 | A1000 | 36% | 26.24d | 2025-05-05 | 2025-07-16 | 0d |  |  | Designer [410 h] | 24,600 | 8,856 | STG1 | ADMIN | PROJ |
|  | 3 | **Foundation** |  | 2025-07-10 | 2026-01-22 |  |  |  |  |  |  |  |  |  |  |  |  |  |  |
| A1030 |  | Site Preparation | 32d | 2025-07-10 | 2025-09-04 | A1020 |  |  |  |  | 0d |  |  | Excavater [320 h] | 22,400 |  | STG2 | PRECON | CONC |
| A1040 |  | Excavation & Formwork | 63d | 2025-09-04 | 2025-12-30 | A1030 |  |  |  |  | 0d |  |  | Excavater [630 h] | 44,100 |  | STG2 | CONST | CONC |
| A1050 |  | Pour Slab | 13d | 2025-12-30 | 2026-01-22 | A1040 |  |  |  |  | 0d |  |  | Ironworker [130 h]; Laborer-Construction [130 h]; Rough Carpenter [130 h]; Finish Carpenter [130 h] | 26,650 |  | STG2 | CONST | CONC |
|  | 4 | **Structure** |  | 2026-01-22 | 2026-08-20 |  |  |  |  |  |  |  |  |  |  |  |  |  |  |
| A1060 |  | Erect Structural Frame | 36d | 2026-01-22 | 2026-03-26 | A1050 |  |  |  |  | 0d |  |  | Ironworker [360 h] | 19,800 |  | STG2 | CONST | STR |
| A1070 |  | Floor Decking | 25d | 2026-03-26 | 2026-05-15 | A1060 |  |  |  |  | 0d |  |  | Ironworker [250 h] | 13,750 |  | STG2 | CONST | STR |
| A1080 |  | Concrete First & Second Floors | 54d | 2026-05-15 | 2026-08-20 | A1070 |  |  |  |  | 0d |  |  | Ironworker [540 h]; Laborer-Construction [540 h]; Rough Carpenter [540 h]; Finish Carpenter [540 h] | 110,700 |  | STG2 | CONST | CONC |
|  | 5 | **Exterior Finishes** |  | 2026-08-20 | 2026-09-22 |  |  |  |  |  |  |  |  |  |  |  |  |  |  |
|  | 1 | **Roof** |  | 2026-08-20 | 2026-09-22 |  |  |  |  |  |  |  |  |  |  |  |  |  |  |
| A1090 |  | Insulation and Built-up Roofing | 18d | 2026-08-20 | 2026-09-22 | A1080 |  |  |  |  | 0d |  |  | Laborer-Construction [180 h] | 7,200 |  | STG3 | CONST | ROOF |
|  | 2 | **Doors and Windows** |  | 2026-08-20 | 2026-09-16 |  |  |  |  |  |  |  |  |  |  |  |  |  |  |
| A1100 |  | Install Doors and Window Frames | 10d | 2026-08-20 | 2026-09-08 | A1080 |  |  |  |  | 3d | 0d |  | Finish Carpenter [100 h] | 6,000 |  | STG5 | CONST | CAR |
| A1110 |  | Install Exterior Doors and Windows | 10d | 2026-08-28 | 2026-09-16 | A1100 SS+5d |  |  |  |  | 3d |  |  | Finish Carpenter [100 h] | 6,000 |  | STG5 | CONST | CAR |
|  | 6 | **Interior Finishes** |  | 2025-07-10 | 2027-02-10 |  |  |  |  |  |  |  |  |  |  |  |  |  |  |
| A1120 |  | Drywall in Offices | 27d | 2026-09-22 | 2026-11-09 | A1090, A1110 |  |  |  |  | 0d |  |  | Finish Carpenter [270 h] | 16,200 |  | STG4 | COMPL | INS |
| A1130 |  | Touchup and Clean-up | 6d | 2027-02-01 | 2027-02-10 | A1180, A1200, A1210 |  |  |  |  | 0d |  |  | Painter [60 h]; Laborer-Construction [60 h]; Finish Carpenter [60 h] | 9,000 |  | STG6 | CLO | FIN |
|  | 1 | **Floor and Carpenting** |  | 2025-07-10 | 2027-01-14 |  |  |  |  |  |  |  |  |  |  |  |  |  |  |
| A1140 |  | Assemble and Submit Flooring Samples | 5d | 2025-07-10 | 2025-07-21 | A1020 |  |  |  |  | 30d | 0d |  | Project Controls [40 h] | 2,800 |  | STG1 | ADMIN | PROJ |
| A1150 |  | Review and Approve Flooring | 18d | 2025-07-21 | 2025-08-20 | A1140 |  |  |  |  | 30d | 0d |  | Project Controls [180 h] | 12,600 |  | STG1 | ADMIN | PROJ |
| A1160 |  | Prepare, Review and Award Flooring Contract | 33d | 2025-08-20 | 2025-10-17 | A1150 |  |  |  |  | 30d | 0d |  | Project Controls [330 h] | 23,100 |  | STG1 | ADMIN | PROJ |
| A1170 |  | Fabricate and Deliver Flooring | 209d | 2025-10-17 | 2026-11-04 | A1160 |  |  |  |  | 30d |  |  |  |  |  | STG5 | COMPL | FL |
| A1180 |  | Install Floor and Carpenting | 9d | 2026-12-29 | 2027-01-14 | A1170, A1190 |  |  |  |  | 0d |  |  | Floor and Carpet Layer [90 h] | 4,050 |  | STG5 | COMPL | FL |

| ID | WBS | Activity | Duration | Start | Finish | Predecessors | Total float | Resources | Cost | Stage | Campaign | Trade |
| --- | --- | --- | --- | --- | --- | --- | --- | --- | --- | --- | --- | --- |
|  | 2 | **Carpentry** |  | 2026-11-09 | 2027-02-01 |  |  |  |  |  |  |  |
| A1190 |  | Install Ceiling Grid | 27d | 2026-11-09 | 2026-12-29 | A1120 | 0d | Finish Carpenter [270 h] | 16,200 | STG4 | COMPL | INS |
| A1200 |  | Finish Carpentry and Millwork | 9d | 2027-01-14 | 2027-02-01 | A1180 | 0d | Finish Carpenter [90 h] | 5,400 | STG5 | COMPL | CAR |
|  | 3 | **Paint** |  | 2026-10-05 | 2026-10-21 |  |  |  |  |  |  |  |
| A1210 |  | Paint Building Interior | 9d | 2026-10-05 | 2026-10-21 | A1120 SS+7d | 56d | Painter [90 h] | 4,500 | STG6 | COMPL | PNT |

## Activity codes

| Code | Value | Meaning |
| --- | --- | --- |
| Campaign | ADMIN | Administrative |
| Campaign | CLO | Close Out |
| Campaign | COMPL | Completions |
| Campaign | CONST | Construction |
| Campaign | MS | Milestones |
| Campaign | PRECON | Pre-Construction |
| Stage | STG1 | Preliminaries |
| Stage | STG2 | Structural & Concrete |
| Stage | STG3 | Roofing |
| Stage | STG4 | Insulation & Cladding |
| Stage | STG5 | Flooring & Carpentry |
| Stage | STG6 | Painting & Finishing |
| Trade | CAR | Carpentry & Frames |
| Trade | CONC | Concreting |
| Trade | FIN | Finishing |
| Trade | FL | Flooring |
| Trade | INS | Insulation & Cladding |
| Trade | PNT | Painting |
| Trade | PROJ | Project |
| Trade | ROOF | Roofing |
| Trade | STR | Structural |
